Schedule from MS Project, 2025-02-03 to 2025-07-23, costs in лв..

## Calendars

- Standard: Mon-Fri 08:00-12:00, 13:00-17:00; Sat-Sun off.

## Resources

| Resource | Rate |
| --- | --- |
| Project Manager | 28 |
| Senior Developer 1 | 55 |
| Senior Developer 2 | 48.5 |
| Junior Developer 1 | 17 |
| Junior Developer 2 | 15.2 |
| QA | 30 |
| Senior Developer 3 | 50 |
| Junior Developer 3 | 16.8 |

## Schedule

| ID | WBS | Task | Duration | Start | Finish | Predecessors | Total slack | Free slack | Constraint | Resources | Work | Cost |
| --- | --- | --- | --- | --- | --- | --- | --- | --- | --- | --- | --- | --- |
| 1 | 1 | **Иницииране на проекта** | 12d | 2025-02-03 | 2025-02-18 |  | 2d |  |  |  | 128h | 4,240 |
| 2 | 1.1 | Анализ на изискванията | 5d | 2025-02-06 | 2025-02-12 | 3 | 2d | 0d |  | Project Manager | 40h | 1,120 |
| 3 | 1.2 | Проучване на заинтересованите страни | 3d | 2025-02-03 | 2025-02-05 |  | 2d | 0d |  | Project Manager | 24h | 672 |
| 4 | 1.3 | Изготвяне на проектна харта | 4d | 2025-02-13 | 2025-02-18 | 2 | 2d | 0d | finish no earlier than 2025-02-18 | Project Manager; Senior Developer 2 | 64h | 2,448 |
| 5 | 2 | **Планиране** | 14d | 2025-02-19 | 2025-03-10 |  | 2d |  |  |  | 186.4h | 7,298 |
| 6 | 2.1 | Разработка на техническа спецификация | 5d | 2025-02-19 | 2025-02-25 | 4 | 2d | 0d | finish no earlier than 2025-02-25 | Project Manager [50%]; Senior Developer 1 [25%]; Senior Developer 3 [25%] | 40h | 1,610 |
| 7 | 2.2 | Създаване на потребителски истории | 2d | 2025-02-26 | 2025-02-27 | 6 | 2d | 0d |  | Project Manager; Senior Developer 3 [20%] | 19.2h | 608 |
| 8 | 2.3 | Проектиране на архитектура | 4d | 2025-02-28 | 2025-03-05 | 7 | 2d | 0d | finish no earlier than 2025-03-05 | Project Manager; Senior Developer 2; Senior Developer 3 | 96h | 4,048 |
| 9 | 2.4 | Планиране на спринтовете | 3d | 2025-03-06 | 2025-03-10 | 8 | 2d | 0d |  | Project Manager; Senior Developer 3 [30%] | 31.2h | 1,032 |
| 10 | 3 | **Разработка на MVP** | 55d | 2025-03-11 | 2025-05-26 |  |  |  |  |  | 2022.4h | 68,955.8 |
| 11 | 3.1 | Разработка на backend услуги | 55d | 2025-03-11 | 2025-05-26 | 9 | 2d | 0d | start no earlier than 2025-03-11 | Senior Developer 2 [50%]; Senior Developer 1 [55%]; Junior Developer 1 [25%]; Junior Developer 2 [35%]; Junior Developer 3 [35%]; Senior Developer 3 [30%] | 946h | 35,538.8 |
| 12 | 3.2 | Разработка на frontend услуги | 55d? | 2025-03-11 | 2025-05-26 | 9 | 42d |  |  | Junior Developer 1 [40%]; Junior Developer 2 [40%]; Senior Developer 1 [20%]; Senior Developer 2 [25%]; Senior Developer 3 [50%]; Junior Developer 3 [65%] | 990h | 30,604.2 |
| 13 | 3.3 | Интеграция с университетски системи | 12d | 2025-03-11 | 2025-03-26 | 9 | 85d |  | start no earlier than 2025-03-11 | Junior Developer 1 [25%]; Junior Developer 2 [25%]; Senior Developer 1 [25%]; Senior Developer 3 [15%] | 86.4h | 2,812.8 |
| 14 | 4 | **Тестване и QA** | 24d | 2025-05-27 | 2025-06-27 |  |  |  |  |  | 265.6h | 9,489 |
| 15 | 4.1 | Unit тестове | 3d | 2025-05-27 | 2025-05-29 | 11 | 2d | 0d | start no earlier than 2025-05-27 | Junior Developer 1 [40%]; Senior Developer 2 [35%]; Junior Developer 2 [50%] | 28.8h | 694.8 |
| 16 | 4.2 | Интеграционни тестове | 7d | 2025-05-30 | 2025-06-09 | 15 | 2d | 0d |  | Junior Developer 1 [25%]; Senior Developer 1 | 70h | 3,318 |
| 17 | 4.3 | Потребителско тестване | 7d | 2025-06-10 | 2025-06-18 | 16 | 2d | 0d |  | Junior Developer 2 [35%]; QA [50%]; Senior Developer 1 [30%]; Junior Developer 3 [25%] | 52h | 1,468 |
| 18 | 4.4 | Оптимизация на производителността | 7d | 2025-06-19 | 2025-06-27 | 17 | 18d |  |  | Junior Developer 2 [25%]; Senior Developer 1 [35%]; Senior Developer 2 [45%]; QA [75%]; Junior Developer 3 [25%] | 114.8h | 4,008.2 |
| 19 | 5 | **Разгръщане** | 23d | 2025-06-23 | 2025-07-23 |  |  |  |  |  | 224.8h | 8,205.44 |
| 20 | 5.1 | Подготовка на инфраструктура | 3d | 2025-06-23 | 2025-06-25 | 17 | 0d |  | start no earlier than 2025-06-23 | Junior Developer 1 [25%]; Junior Developer 2 [35%]; Senior Developer 3 [45%]; Senior Developer 1 [20%] | 27.6h | 997.2 |
| 21 | 5.2 | Конфигурация на среди | 3d | 2025-06-26 | 2025-06-30 | 20 | 0d |  |  | Junior Developer 2 [30%]; Senior Developer 3 | 31.2h | 1,309.44 |
| 22 | 5.3 | Deployment | 12d | 2025-07-01 | 2025-07-16 | 21 | 0d |  |  | Junior Developer 1 [15%]; Senior Developer 1 [30%]; Senior Developer 2 [30%]; Junior Developer 3 [25%] | 96h | 3,628.8 |
| 23 | 5.4 | Документация | 5d | 2025-07-17 | 2025-07-23 | 22 | 0d |  |  | Project Manager; QA [50%]; Senior Developer 1 [25%] | 70h | 2,270 |
